# Metasepi Project

Schedule from Planner, 2014-05-12 to 2017-02-15.

## Calendars

- デフォルト: Mon-Fri 08:00-12:00, 13:00-17:00; Sat-Sun off.

## Schedule

| ID | WBS | Task | Type | Duration | Start | Finish | Predecessors | Constraint | Work |
| --- | --- | --- | --- | --- | --- | --- | --- | --- | --- |
| 1 | 1 | **ATS demo on tiny CPU** |  |  | 2014-05-12 | 2014-05-26 |  |  | 88h |
| 2 | 1.1 | AVR support to ATS |  |  | 2014-05-12 | 2014-05-20 |  |  | 51h |
| 3 | 1.2 | ARM support to ATS |  |  | 2014-05-20 | 2014-05-26 | 2 |  | 37h |
| 4 | 2 | **Translate ATS doc** |  |  | 2014-05-12 | 2015-09-30 |  |  | 2896.5h |
| 5 | 2.1 | ATS2TUTORIAL |  |  | 2014-05-12 | 2014-05-26 |  |  | 88h |
| 6 | 2.2 | INT2PROGINATS |  |  | 2014-05-27 | 2014-06-20 | 5 |  | 152h |
| 7 | 2.3 | ATS Paper |  |  | 2014-06-23 | 2014-08-12 | 6 |  | 291.5h |
| 8 | 2.4 | Wiki |  |  | 2014-08-12 | 2014-09-02 | 7 |  | 124.5h |
| 9 | 2.5 | BLUISH CODER |  |  | 2014-09-03 | 2015-08-17 | 8 |  | 1988.5h |
| 10 | 2.6 | DML Paper |  |  | 2015-08-17 | 2015-09-30 | 9 |  | 252h |
| 11 | 3 | **Translate Metasepi blog** |  |  | 2014-05-27 | 2014-08-22 | 5 |  | 512h |
| 12 | 3.1 | Translate past entries |  |  | 2014-05-27 | 2014-08-22 |  |  | 512h |
| 13 | 4 | OSC@Nagoya | milestone | 0d | 2014-07-04 | 2014-07-04 |  | must start on 2014-07-04 |  |
| 14 | 5 | OSC@Kansai | milestone | 0d | 2014-08-01 | 2014-08-01 |  | must start on 2014-08-01 |  |
| 15 | 6 | Haskell Symposium | milestone | 0d | 2014-09-04 | 2014-09-04 | 11 | must start on 2014-09-04 |  |
| 16 | 7 | OSC@Tokyo | milestone | 0d | 2014-10-20 | 2014-10-18 |  | must start on 2014-10-18 |  |
| 17 | 8 | **Setup to snatch Linux** |  |  | 2014-08-25 | 2014-12-31 | 11 |  | 744h |
| 18 | 8.1 | Setup raspberrypi |  |  | 2014-08-25 | 2014-10-08 |  |  | 264h |
| 19 | 8.2 | Setup ATS config |  |  | 2014-10-09 | 2014-11-21 | 18 |  | 256h |
| 20 | 8.3 | Choose snatch target |  |  | 2014-11-24 | 2014-12-24 | 19 |  | 184h |
| 21 | 8.4 | Fix Makefile |  |  | 2014-12-25 | 2014-12-31 | 20 |  | 40h |
| 22 | 9 | Paper for PPL 2015 | milestone | 0d | 2015-01-23 | 2015-01-23 | 17 | must start on 2015-01-23 |  |
| 23 | 10 | **Snatch NFSv2** |  |  | 2015-01-01 | 2015-02-25 | 17 |  | 320h |
| 24 | 10.1 | Snatch |  |  | 2015-01-01 | 2015-01-28 |  |  | 160h |
| 25 | 10.2 | Testing |  |  | 2015-01-29 | 2015-02-11 | 24 |  | 80h |
| 26 | 10.3 | Benchmark |  |  | 2015-02-12 | 2015-02-25 | 25 |  | 80h |
| 27 | 11 | Paper for ICFP 2015 | milestone | 0d | 2015-02-27 | 2015-02-27 | 23 | must start on 2015-02-27 |  |
| 28 | 12 | Demo at PPL 2015 | milestone | 0d | 2015-03-04 | 2015-03-04 |  | must start on 2015-03-04 |  |

| ID | WBS | Task | Type | Duration | Start | Finish | Predecessors | Constraint | Work |
| --- | --- | --- | --- | --- | --- | --- | --- | --- | --- |
| 29 | 13 | **プログラミングの基礎 on ATS** |  |  | 2015-02-26 | 2015-05-20 | 23 |  | 480h |
| 30 | 13.1 | In Japanese |  |  | 2015-02-26 | 2015-05-20 |  |  | 480h |
| 31 | 14 | OSC 2015 Nagoya | milestone | 0d | 2015-05-22 | 2015-05-22 | 29 | must start on 2015-05-22 |  |
| 32 | 15 | OSC 2015 Hokkaido | milestone | 0d | 2015-06-12 | 2015-06-12 |  | must start on 2015-06-12 |  |
| 33 | 16 | **SNS ATS2** |  |  | 2015-05-21 | 2015-10-07 | 29 |  | 800h |
| 34 | 16.1 | Conpile error badges |  |  | 2015-05-21 | 2015-06-17 |  |  | 160h |
| 35 | 16.2 | Show URL to forum |  |  | 2015-06-18 | 2015-07-15 | 34 |  | 160h |
| 36 | 16.3 | Show how to fix it |  |  | 2015-07-16 | 2015-10-07 | 35 |  | 480h |
| 37 | 17 | **Lifegame on FSM-55** |  |  | 2015-10-08 | 2016-01-12 | 33 |  | 552h |
| 38 | 17.1 | Setup gdbserver |  |  | 2015-10-08 | 2015-10-28 |  |  | 120h |
| 39 | 17.2 | Snatch FSM-55 |  |  | 2015-10-29 | 2015-12-23 | 38 |  | 320h |
| 40 | 17.3 | Lifegame on FSM-55 |  |  | 2015-12-24 | 2016-01-12 | 39 |  | 112h |
| 41 | 18 | **FSM-55 from PCB** |  |  | 2016-01-13 | 2016-04-26 | 37 |  | 600h |
| 42 | 18.1 | Prepare the parts |  |  | 2016-01-13 | 2016-02-18 |  |  | 216h |
| 43 | 18.2 | Understand reflow |  |  | 2016-02-19 | 2016-03-03 | 42 |  | 80h |
| 44 | 18.3 | Make some boards |  |  | 2016-03-04 | 2016-04-19 | 43 |  | 264h |
| 45 | 18.4 | Schedule fpiot meetup |  |  | 2016-04-20 | 2016-04-26 | 44 |  | 40h |
| 46 | 19 | **1wire protocol** |  |  | 2016-04-27 | 2016-08-12 | 41 |  | 624h |
| 47 | 19.1 | Hardware design |  |  | 2016-04-27 | 2016-05-10 |  |  | 80h |
| 48 | 19.2 | Single network |  |  | 2016-05-11 | 2016-05-26 | 47 |  | 96h |
| 49 | 19.3 | Sequence network |  |  | 2016-05-27 | 2016-08-12 | 48 |  | 448h |
| 50 | 20 | **Square network** |  |  | 2016-08-15 | 2016-12-19 | 46 |  | 728h |
| 51 | 20.1 | Hardware design |  |  | 2016-08-15 | 2016-09-23 |  |  | 240h |
| 52 | 20.2 | Single network |  |  | 2016-09-26 | 2016-11-04 | 51 |  | 240h |
| 53 | 20.3 | Network simulator |  |  | 2016-11-07 | 2016-12-16 | 52 |  | 240h |
| 54 | 20.4 | Multiple network |  |  | 2016-12-19 | 2016-12-19 | 53 |  | 8h |

| ID | WBS | Task | Start | Finish | Predecessors | Work |
| --- | --- | --- | --- | --- | --- | --- |
| 55 | 21 | **ATS package manager** | 2016-12-20 | 2017-01-18 | 50 | 176h |
| 56 | 21.1 | Understand opam design | 2016-12-20 | 2017-01-09 |  | 120h |
| 57 | 21.2 | Get design for ATS | 2017-01-10 | 2017-01-18 | 56 | 56h |
| 58 | 22 | Parsec on ATS | 2017-01-19 | 2017-02-15 | 55 | 160h |
